# Planificacion_Anual_revA

Schedule from MS Project, 2021-12-20 to 2023-12-14.

## Calendars

- Estándar: Mon-Fri 09:00-13:00, 15:00-19:00; Sat-Sun off.

## Resources

| Resource |
| --- |
| Product Manager |
| Machine Learning Engineer |
| Business Intelligence Analyst |

## Schedule

| ID | WBS | Task | Type | Duration | Start | Finish | Predecessors | Total slack | Free slack | Resources | Work |
| --- | --- | --- | --- | --- | --- | --- | --- | --- | --- | --- | --- |
| 2 | 1 | **Task Automation** |  | 64.44d | 2022-01-01 | 2022-04-01 |  | 443.99d |  |  | 654.4h |
| 3 | 1.1 | **Planta** |  | 32.22d | 2022-01-03 | 2022-02-16 |  | 443.99d | 0d |  | 327.2h |
| 4 | 1.1.1 | **Generacion Daily** |  | 32.22d | 2022-01-03 | 2022-02-16 |  | 443.99d |  |  | 327.2h |
| 5 | 1.1.1.1 | Identificación de los procesos candidatos. |  | 5d | 2022-01-03 | 2022-01-07 |  | 443.99d | 0d | Machine Learning Engineer; Product Manager [33%]; Business Intelligence Analyst [10%] | 57.2h |
| 6 | 1.1.1.2 | Relevamiento en detalle de los procesos. |  | 5d | 2022-01-10 | 2022-01-14 | 5 | 443.99d | 0d | Machine Learning Engineer; Product Manager [33%]; Business Intelligence Analyst [10%] | 57.2h |
| 7 | 1.1.1.3 | Desarrollo del robot RPA y etapa de testing. |  | 16.67d | 2022-01-17 | 2022-02-08 | 6 | 443.99d | 0d | Machine Learning Engineer [90%]; Product Manager [33%] | 159.6h |
| 8 | 1.1.1.4 | Implementación del robot y entrega al cliente. |  | 5.56d | 2022-02-08 | 2022-02-16 | 7 | 443.99d |  | Machine Learning Engineer [90%]; Product Manager [33%] | 53.2h |
| 9 | 1.2 | **Mantenimiento Planta** |  | 32.22d | 2022-02-16 | 2022-04-01 | 3 | 443.99d |  |  | 327.2h |
| 10 | 1.2.1 | **KPIs del Sector** |  | 32.22d | 2022-02-16 | 2022-04-01 |  | 443.99d |  |  | 327.2h |
| 11 | 1.2.1.1 | Identificaciónde los procesos candidatos. |  | 5d | 2022-02-16 | 2022-02-23 |  | 443.99d | 0d | Machine Learning Engineer; Product Manager [33%]; Business Intelligence Analyst [10%] | 57.2h |
| 12 | 1.2.1.2 | Relevamiento en detalle de los procesos. |  | 5d | 2022-02-23 | 2022-03-02 | 11 | 443.99d | 0d | Machine Learning Engineer; Product Manager [33%]; Business Intelligence Analyst [10%] | 57.2h |
| 13 | 1.2.1.3 | Desarrollo del robot RPA y etapa de testing. |  | 16.67d | 2022-03-02 | 2022-03-24 | 12 | 443.99d | 0d | Machine Learning Engineer [90%]; Product Manager [33%] | 159.6h |
| 14 | 1.2.1.4 | Implementación del robot y entrega al cliente. |  | 5.56d | 2022-03-24 | 2022-04-01 | 13 | 443.99d |  | Machine Learning Engineer [90%]; Product Manager [33%] | 53.2h |
| 15 | 1.3 | **Mina** |  | 0d | 2022-01-01 | 2022-01-01 |  | 508.43d |  |  |  |
| 16 | 1.3.1 | A definir | manual | 1d | 2021-12-20 | 2021-12-20 |  |  |  |  |  |
| 17 | 2 | **Business Analytics** |  | 250d? | 2022-01-03 | 2022-12-16 |  | 258.43d |  |  | 2248h |
| 18 | 2.1 | **Planta** |  | 187.5d | 2022-01-03 | 2022-09-21 |  | 258.43d | 0d |  | 1686h |
| 19 | 2.1.1 | **Trituracion** |  | 31.25d | 2022-01-03 | 2022-02-15 |  | 258.43d | 0d |  | 281h |
| 20 | 2.1.1.1 | Identificación de las necesidades y definición de los objetivos |  | 6.25d | 2022-01-03 | 2022-01-11 |  | 258.43d | 0d | Business Intelligence Analyst [80%]; Product Manager [33%] | 53.2h |
| 21 | 2.1.1.2 | Definición del modelo de datos |  | 6.25d | 2022-01-11 | 2022-01-19 | 20 | 258.43d | 0d | Business Intelligence Analyst [80%]; Product Manager [33%] | 53.2h |
| 22 | 2.1.1.3 | Implantación de la infraestructura |  | 12.5d | 2022-01-19 | 2022-02-04 | 21 | 258.43d | 0d | Business Intelligence Analyst [80%]; Product Manager [33%]; Machine Learning Engineer [10%] | 116.4h |
| 23 | 2.1.1.4 | Arranque, formación y soporte |  | 6.25d | 2022-02-07 | 2022-02-15 | 22 | 258.43d |  | Business Intelligence Analyst [80%]; Product Manager [33%]; Machine Learning Engineer [10%] | 58.2h |
| 24 | 2.1.2 | **Molienda** |  | 31.25d | 2022-02-15 | 2022-03-30 | 19 | 258.43d | 0d |  | 281h |
| 25 | 2.1.2.1 | Identificación de las necesidades y definición de los objetivos |  | 6.25d | 2022-02-15 | 2022-02-23 |  | 8.17d | 0d | Business Intelligence Analyst [80%]; Product Manager [33%] | 53.2h |
| 26 | 2.1.2.2 | Definición del modelo de datos |  | 6.25d | 2022-02-23 | 2022-03-03 | 25 | 8.17d | 0d | Business Intelligence Analyst [80%]; Product Manager [33%] | 53.2h |
| 27 | 2.1.2.3 | Implantación de la infraestructura |  | 12.5d | 2022-03-03 | 2022-03-22 | 26 | 8.17d | 0d | Business Intelligence Analyst [80%]; Product Manager [33%]; Machine Learning Engineer [10%] | 116.4h |
| 28 | 2.1.2.4 | Arranque, formación y soporte |  | 6.25d | 2022-03-22 | 2022-03-30 | 27 | 8.17d |  | Business Intelligence Analyst [80%]; Product Manager [33%]; Machine Learning Engineer [10%] | 58.2h |

| ID | WBS | Task | Duration | Start | Finish | Predecessors | Total slack | Free slack | Resources | Work |
| --- | --- | --- | --- | --- | --- | --- | --- | --- | --- | --- |
| 29 | 2.1.3 | **Filtros** | 31.25d | 2022-03-30 | 2022-05-12 | 24 | 258.43d | 0d |  | 281h |
| 30 | 2.1.3.1 | Identificación de las necesidades y definición de los objetivos | 6.25d | 2022-03-30 | 2022-04-07 |  | 8.17d | 0d | Business Intelligence Analyst [80%]; Product Manager [33%] | 53.2h |
| 31 | 2.1.3.2 | Definición del modelo de datos | 6.25d | 2022-04-07 | 2022-04-15 | 30 | 8.17d | 0d | Business Intelligence Analyst [80%]; Product Manager [33%] | 53.2h |
| 32 | 2.1.3.3 | Implantación de la infraestructura | 12.5d | 2022-04-18 | 2022-05-04 | 31 | 8.17d | 0d | Business Intelligence Analyst [80%]; Product Manager [33%]; Machine Learning Engineer [10%] | 116.4h |
| 33 | 2.1.3.4 | Arranque, formación y soporte | 6.25d | 2022-05-04 | 2022-05-12 | 32 | 8.17d |  | Business Intelligence Analyst [80%]; Product Manager [33%]; Machine Learning Engineer [10%] | 58.2h |
| 34 | 2.1.4 | **Espesadores** | 31.25d | 2022-05-12 | 2022-06-24 | 29 | 258.43d | 0d |  | 281h |
| 35 | 2.1.4.1 | Identificación de las necesidades y definición de los objetivos | 6.25d | 2022-05-12 | 2022-05-20 |  | 258.43d | 0d | Business Intelligence Analyst [80%]; Product Manager [33%] | 53.2h |
| 36 | 2.1.4.2 | Definición del modelo de datos | 6.25d | 2022-05-23 | 2022-05-31 | 35 | 258.43d | 0d | Business Intelligence Analyst [80%]; Product Manager [33%] | 53.2h |
| 37 | 2.1.4.3 | Implantación de la infraestructura | 12.5d | 2022-05-31 | 2022-06-16 | 36 | 258.43d | 0d | Business Intelligence Analyst [80%]; Product Manager [33%]; Machine Learning Engineer [10%] | 116.4h |
| 38 | 2.1.4.4 | Arranque, formación y soporte | 6.25d | 2022-06-16 | 2022-06-24 | 37 | 258.43d |  | Business Intelligence Analyst [80%]; Product Manager [33%]; Machine Learning Engineer [10%] | 58.2h |
| 39 | 2.1.5 | **Tren de Bombas** | 31.25d | 2022-06-27 | 2022-08-09 | 34 | 258.43d | 0d |  | 281h |
| 40 | 2.1.5.1 | Identificación de las necesidades y definición de los objetivos | 6.25d | 2022-06-27 | 2022-07-05 |  | 258.43d | 0d | Business Intelligence Analyst [80%]; Product Manager [33%] | 53.2h |
| 41 | 2.1.5.2 | Definición del modelo de datos | 6.25d | 2022-07-05 | 2022-07-13 | 40 | 258.43d | 0d | Business Intelligence Analyst [80%]; Product Manager [33%] | 53.2h |
| 42 | 2.1.5.3 | Implantación de la infraestructura | 12.5d | 2022-07-13 | 2022-07-29 | 41 | 258.43d | 0d | Business Intelligence Analyst [80%]; Product Manager [33%]; Machine Learning Engineer [10%] | 116.4h |
| 43 | 2.1.5.4 | Arranque, formación y soporte | 6.25d | 2022-08-01 | 2022-08-09 | 42 | 258.43d |  | Business Intelligence Analyst [80%]; Product Manager [33%]; Machine Learning Engineer [10%] | 58.2h |
| 44 | 2.1.6 | **Analitica Consumibles-Bolas-Reactivos** | 31.25d | 2022-08-09 | 2022-09-21 | 39 | 258.43d |  |  | 281h |
| 45 | 2.1.6.1 | Identificación de las necesidades y definición de los objetivos | 6.25d | 2022-08-09 | 2022-08-17 |  | 258.43d | 0d | Business Intelligence Analyst [80%]; Product Manager [33%] | 53.2h |
| 46 | 2.1.6.2 | Definición del modelo de datos | 6.25d | 2022-08-17 | 2022-08-25 | 45 | 258.43d | 0d | Business Intelligence Analyst [80%]; Product Manager [33%] | 53.2h |
| 47 | 2.1.6.3 | Implantación de la infraestructura | 12.5d | 2022-08-25 | 2022-09-13 | 46 | 258.43d | 0d | Business Intelligence Analyst [80%]; Product Manager [33%]; Machine Learning Engineer [10%] | 116.4h |
| 48 | 2.1.6.4 | Arranque, formación y soporte | 6.25d | 2022-09-13 | 2022-09-21 | 47 | 258.43d |  | Business Intelligence Analyst [80%]; Product Manager [33%]; Machine Learning Engineer [10%] | 58.2h |
| 49 | 2.2 | **Mantenimiento Planta** | 62.5d? | 2022-09-21 | 2022-12-16 | 18 | 258.43d |  |  | 562h |
| 50 | 2.2.1 | **Roturas Cañerias/Bombas** | 31.25d | 2022-09-21 | 2022-11-03 |  | 258.43d | 0d |  | 281h |
| 51 | 2.2.1.1 | Identificación de las necesidades y definición de los objetivos | 6.25d | 2022-09-21 | 2022-09-29 |  | 258.43d | 0d | Business Intelligence Analyst [80%]; Product Manager [33%] | 53.2h |
| 52 | 2.2.1.2 | Definición del modelo de datos | 6.25d | 2022-09-29 | 2022-10-07 | 51 | 258.43d | 0d | Business Intelligence Analyst [80%]; Product Manager [33%] | 53.2h |
| 53 | 2.2.1.3 | Implantación de la infraestructura | 12.5d | 2022-10-10 | 2022-10-26 | 52 | 258.43d | 0d | Business Intelligence Analyst [80%]; Product Manager [33%]; Machine Learning Engineer [10%] | 116.4h |
| 54 | 2.2.1.4 | Arranque, formación y soporte | 6.25d | 2022-10-26 | 2022-11-03 | 53 | 258.43d |  | Business Intelligence Analyst [80%]; Product Manager [33%]; Machine Learning Engineer [10%] | 58.2h |

| ID | WBS | Task | Duration | Start | Finish | Predecessors | Total slack | Free slack | Resources | Work |
| --- | --- | --- | --- | --- | --- | --- | --- | --- | --- | --- |
| 55 | 2.2.2 | **Roturas Bombas** | 31.25d | 2022-11-03 | 2022-12-16 | 50 | 258.43d |  |  | 281h |
| 56 | 2.2.2.1 | Identificación de las necesidades y definición de los objetivos | 6.25d | 2022-11-03 | 2022-11-11 |  | 258.43d | 0d | Business Intelligence Analyst [80%]; Product Manager [33%] | 53.2h |
| 57 | 2.2.2.2 | Definición del modelo de datos | 6.25d | 2022-11-14 | 2022-11-22 | 56 | 258.43d | 0d | Business Intelligence Analyst [80%]; Product Manager [33%] | 53.2h |
| 58 | 2.2.2.3 | Implantación de la infraestructura | 12.5d | 2022-11-22 | 2022-12-08 | 57 | 258.43d | 0d | Business Intelligence Analyst [80%]; Product Manager [33%]; Machine Learning Engineer [10%] | 116.4h |
| 59 | 2.2.2.4 | Arranque, formación y soporte | 6.25d | 2022-12-08 | 2022-12-16 | 58 | 258.43d |  | Business Intelligence Analyst [80%]; Product Manager [33%]; Machine Learning Engineer [10%] | 58.2h |
| 60 | 2.2.3 | A definir | 1d? | 2022-09-21 | 2022-09-22 |  | 319.93d |  |  |  |
| 61 | 2.3 | **Mina** | 1d | 2022-01-03 | 2022-01-03 |  | 507.43d |  |  |  |
| 62 | 2.3.1 | A definir | 1d | 2022-01-03 | 2022-01-03 |  | 507.43d |  |  |  |
| 63 | 3 | **Machine Learning** | 508.43d | 2022-01-03 | 2023-12-14 |  | 0d |  |  | 2741.98h |
| 64 | 3.1 | ML Flotación | 80d | 2022-01-03 | 2022-04-22 |  | 0d |  | Product Manager [33%]; Business Intelligence Analyst [10%] | 275.2h |
| 65 | 3.2 | **Planta** | 96.44d | 2022-04-25 | 2022-09-06 | 64 | 0d |  |  | 1059.14h |
| 66 | 3.2.1 | **Modelos p/ Optimizar Proceso** | 96.44d | 2022-04-25 | 2022-09-06 |  | 0d |  |  | 1059.14h |
| 67 | 3.2.1.1 | **PHASE 1 - BUSINESS UNDERSTANDING** | 16.64d | 2022-04-25 | 2022-05-17 |  | 0d |  |  | 146.23h |
| 68 | 3.2.1.1.1 | **Determine Business Objectives** | 8.17d | 2022-04-25 | 2022-05-05 |  | 0d |  |  | 46.63h |
| 69 | 3.2.1.1.1.1 | Background | 5d | 2022-04-25 | 2022-04-29 |  | 0d |  | Business Intelligence Analyst [20%]; Machine Learning Engineer [90%]; Product Manager [67%] | 28.4h |
| 70 | 3.2.1.1.1.2 | Business Objectives | 1.67d | 2022-05-02 | 2022-05-03 | 69 | 0d |  | Business Intelligence Analyst [20%]; Machine Learning Engineer [90%]; Product Manager [67%] | 9.47h |
| 71 | 3.2.1.1.1.3 | Business Success Criteria | 1.5d | 2022-05-03 | 2022-05-05 | 70 | 0d |  | Business Intelligence Analyst [20%]; Machine Learning Engineer; Product Manager [67%] | 8.76h |
| 72 | 3.2.1.1.2 | **Asses Situation** | 5.1d | 2022-05-05 | 2022-05-12 | 68 | 0d |  |  | 72.22h |
| 73 | 3.2.1.1.2.1 | Inventory of Resources | 3d | 2022-05-05 | 2022-05-10 |  | 0d |  | Business Intelligence Analyst [20%]; Machine Learning Engineer [90%]; Product Manager [67%] | 42.48h |
| 74 | 3.2.1.1.2.2 | Requirements, Assumptions, and Constraints | 0.6d | 2022-05-10 | 2022-05-10 | 73 | 0d |  | Business Intelligence Analyst [20%]; Machine Learning Engineer [90%]; Product Manager [67%] | 8.5h |
| 75 | 3.2.1.1.2.3 | Risk and Contingencies | 0.6d | 2022-05-10 | 2022-05-11 | 74 | 0d |  | Business Intelligence Analyst [20%]; Machine Learning Engineer [90%]; Product Manager [67%] | 8.5h |
| 76 | 3.2.1.1.2.4 | Terminology | 0.3d | 2022-05-11 | 2022-05-11 | 75 | 0d |  | Business Intelligence Analyst [20%]; Machine Learning Engineer [90%]; Product Manager [67%] | 4.25h |
| 77 | 3.2.1.1.2.5 | Costs and Benefits | 0.6d | 2022-05-11 | 2022-05-12 | 76 | 0d |  | Business Intelligence Analyst [20%]; Machine Learning Engineer [90%]; Product Manager [67%] | 8.5h |
| 78 | 3.2.1.1.3 | **Determine Data Minning Goals** | 2.47d | 2022-05-12 | 2022-05-16 | 72 | 0d |  |  | 17.09h |
| 79 | 3.2.1.1.3.1 | Data Minning Goals | 1.24d | 2022-05-12 | 2022-05-13 |  | 0d |  | Business Intelligence Analyst [20%]; Machine Learning Engineer [90%]; Product Manager [33%] | 8.54h |
| 80 | 3.2.1.1.3.2 | Data Succes Criteria | 1.24d | 2022-05-13 | 2022-05-16 | 79 | 0d |  | Business Intelligence Analyst [20%]; Machine Learning Engineer [90%]; Product Manager [33%] | 8.54h |

| ID | WBS | Task | Duration | Start | Finish | Predecessors | Total slack | Resources | Work |
| --- | --- | --- | --- | --- | --- | --- | --- | --- | --- |
| 81 | 3.2.1.1.4 | **Produce Project Plan** | 0.9d | 2022-05-16 | 2022-05-17 | 78 | 0d |  | 10.3h |
| 82 | 3.2.1.1.4.1 | Project Plan | 0.3d | 2022-05-16 | 2022-05-17 |  | 0d | Business Intelligence Analyst [20%]; Machine Learning Engineer [90%]; Product Manager [67%] | 3.43h |
| 83 | 3.2.1.1.4.2 | Initial Assesment of Tools and Techniques | 0.6d | 2022-05-17 | 2022-05-17 | 82 | 0d | Business Intelligence Analyst [20%]; Machine Learning Engineer [90%]; Product Manager [67%] | 6.86h |
| 84 | 3.2.1.2 | **PHASE 2 - DATA UNDERSTANDING** | 14.4d | 2022-05-17 | 2022-06-07 | 67 | 0d |  | 164.74h |
| 85 | 3.2.1.2.1 | **Collect Initial Data** | 6d | 2022-05-17 | 2022-05-25 |  | 0d |  | 68.64h |
| 86 | 3.2.1.2.1.1 | Initial Data Collection Report | 6d | 2022-05-17 | 2022-05-25 |  | 0d | Business Intelligence Analyst [20%]; Machine Learning Engineer [90%]; Product Manager [67%] | 68.64h |
| 87 | 3.2.1.2.2 | **Describe Data** | 1.2d | 2022-05-25 | 2022-05-26 | 85 | 0d |  | 13.73h |
| 88 | 3.2.1.2.2.1 | Data Description Report | 1.2d | 2022-05-25 | 2022-05-26 |  | 0d | Business Intelligence Analyst [20%]; Machine Learning Engineer [90%]; Product Manager [67%] | 13.73h |
| 89 | 3.2.1.2.3 | **Explore Data** | 6d | 2022-05-26 | 2022-06-03 | 87 | 0d |  | 68.64h |
| 90 | 3.2.1.2.3.1 | Data Exploration Report | 6d | 2022-05-26 | 2022-06-03 |  | 0d | Business Intelligence Analyst [20%]; Machine Learning Engineer [90%]; Product Manager [67%] | 68.64h |
| 91 | 3.2.1.2.4 | **Verify Data Quality** | 1.2d | 2022-06-03 | 2022-06-07 | 89 | 0d |  | 13.73h |
| 92 | 3.2.1.2.4.1 | Data Quality Report | 1.2d | 2022-06-03 | 2022-06-07 |  | 0d | Business Intelligence Analyst [20%]; Machine Learning Engineer [90%]; Product Manager [67%] | 13.73h |
| 93 | 3.2.1.3 | **PHASE 3 - DATA PREPARATION** | 21d | 2022-06-07 | 2022-07-06 | 84 | 0d |  | 240.24h |
| 94 | 3.2.1.3.1 | Data Set | 9d | 2022-06-07 | 2022-06-20 |  | 0d | Business Intelligence Analyst [20%]; Machine Learning Engineer [90%]; Product Manager [67%] | 102.96h |
| 95 | 3.2.1.3.2 | Data Set Description | 1.2d | 2022-06-20 | 2022-06-21 | 94 | 0d | Business Intelligence Analyst [20%]; Machine Learning Engineer [90%]; Product Manager [67%] | 13.73h |
| 96 | 3.2.1.3.3 | **Select Data Set** | 0.6d | 2022-06-21 | 2022-06-21 | 95 | 0d |  | 6.86h |
| 97 | 3.2.1.3.3.1 | Rationale for Inclusion/Exclusion | 0.6d | 2022-06-21 | 2022-06-21 |  | 0d | Business Intelligence Analyst [20%]; Machine Learning Engineer [90%]; Product Manager [67%] | 6.86h |
| 98 | 3.2.1.3.4 | **Clean Data** | 1.2d | 2022-06-21 | 2022-06-23 | 96 | 0d |  | 13.73h |
| 99 | 3.2.1.3.4.1 | Data Cleaning Report | 1.2d | 2022-06-21 | 2022-06-23 |  | 0d | Business Intelligence Analyst [20%]; Machine Learning Engineer [90%]; Product Manager [67%] | 13.73h |
| 100 | 3.2.1.3.5 | **Construct Data** | 3.6d | 2022-06-23 | 2022-06-28 | 98 | 0d |  | 41.18h |
| 101 | 3.2.1.3.5.1 | Derived Attributes | 2.4d | 2022-06-23 | 2022-06-27 |  | 0d | Business Intelligence Analyst [20%]; Machine Learning Engineer [90%]; Product Manager [67%] | 27.46h |
| 102 | 3.2.1.3.5.2 | Generated Records | 1.2d | 2022-06-27 | 2022-06-28 | 101 | 0d | Business Intelligence Analyst [20%]; Machine Learning Engineer [90%]; Product Manager [67%] | 13.73h |
| 103 | 3.2.1.3.6 | **Integrate Data** | 4.2d | 2022-06-28 | 2022-07-04 | 100 | 0d |  | 48.05h |
| 104 | 3.2.1.3.6.1 | Merge Data | 4.2d | 2022-06-28 | 2022-07-04 |  | 0d | Business Intelligence Analyst [20%]; Machine Learning Engineer [90%]; Product Manager [67%] | 48.05h |

| ID | WBS | Task | Duration | Start | Finish | Predecessors | Total slack | Resources | Work |
| --- | --- | --- | --- | --- | --- | --- | --- | --- | --- |
| 105 | 3.2.1.3.7 | **Format Data** | 1.2d | 2022-07-04 | 2022-07-06 | 103 | 0d |  | 13.73h |
| 106 | 3.2.1.3.7.1 | Reformatted Data | 1.2d | 2022-07-04 | 2022-07-06 |  | 0d | Business Intelligence Analyst [20%]; Machine Learning Engineer [90%]; Product Manager [67%] | 13.73h |
| 107 | 3.2.1.4 | **PHASE 4 - MODELING** | 19.2d | 2022-07-06 | 2022-08-02 | 93 | 0d |  | 219.65h |
| 108 | 3.2.1.4.1 | **Select Modeling Technique** | 3.6d | 2022-07-06 | 2022-07-11 |  | 0d |  | 41.18h |
| 109 | 3.2.1.4.1.1 | Modeling Technique | 2.4d | 2022-07-06 | 2022-07-08 |  | 0d | Business Intelligence Analyst [20%]; Machine Learning Engineer [90%]; Product Manager [67%] | 27.46h |
| 110 | 3.2.1.4.1.2 | Modeling Assumptions | 1.2d | 2022-07-08 | 2022-07-11 | 109 | 0d | Business Intelligence Analyst [20%]; Machine Learning Engineer [90%]; Product Manager [67%] | 13.73h |
| 111 | 3.2.1.4.2 | **Generate Test Design** | 3d | 2022-07-11 | 2022-07-14 | 108 | 0d |  | 34.32h |
| 112 | 3.2.1.4.2.1 | Test Design | 3d | 2022-07-11 | 2022-07-14 |  | 0d | Business Intelligence Analyst [20%]; Machine Learning Engineer [90%]; Product Manager [67%] | 34.32h |
| 113 | 3.2.1.4.3 | **Build Model** | 11.4d | 2022-07-14 | 2022-08-01 | 111 | 0d |  | 130.42h |
| 114 | 3.2.1.4.3.1 | Parameter Settings | 3d | 2022-07-14 | 2022-07-19 |  | 0d | Business Intelligence Analyst [20%]; Machine Learning Engineer [90%]; Product Manager [67%] | 34.32h |
| 115 | 3.2.1.4.3.2 | Models | 7.2d | 2022-07-19 | 2022-07-28 | 114 | 0d | Business Intelligence Analyst [20%]; Machine Learning Engineer [90%]; Product Manager [67%] | 82.37h |
| 116 | 3.2.1.4.3.3 | Model Description | 1.2d | 2022-07-28 | 2022-08-01 | 115 | 0d | Business Intelligence Analyst [20%]; Machine Learning Engineer [90%]; Product Manager [67%] | 13.73h |
| 117 | 3.2.1.4.4 | **Assess Model** | 1.2d | 2022-08-01 | 2022-08-02 | 113 | 0d |  | 13.73h |
| 118 | 3.2.1.4.4.1 | Model Assessment | 0.6d | 2022-08-01 | 2022-08-01 |  | 0d | Business Intelligence Analyst [20%]; Machine Learning Engineer [90%]; Product Manager [67%] | 6.86h |
| 119 | 3.2.1.4.4.2 | Revised Parameter Settings | 0.6d | 2022-08-01 | 2022-08-02 | 118 | 0d | Business Intelligence Analyst [20%]; Machine Learning Engineer [90%]; Product Manager [67%] | 6.86h |
| 120 | 3.2.1.5 | **PHASE 5 - EVALUATION** | 4.2d | 2022-08-02 | 2022-08-08 | 107 | 0d |  | 48.05h |
| 121 | 3.2.1.5.1 | **Evaluate Results** | 2.4d | 2022-08-02 | 2022-08-04 |  | 0d |  | 27.46h |
| 122 | 3.2.1.5.1.1 | Assessment of Data Mining Results w. r. t. Business Success Criteria | 1.8d | 2022-08-02 | 2022-08-04 |  | 0d | Business Intelligence Analyst [20%]; Machine Learning Engineer [90%]; Product Manager [67%] | 20.59h |
| 123 | 3.2.1.5.1.2 | Approved Models | 0.6d | 2022-08-04 | 2022-08-04 | 122 | 0d | Business Intelligence Analyst [20%]; Machine Learning Engineer [90%]; Product Manager [67%] | 6.86h |
| 124 | 3.2.1.5.2 | **Review Process** | 1.2d | 2022-08-04 | 2022-08-05 | 121 | 0d |  | 13.73h |
| 125 | 3.2.1.5.2.1 | Review of Process | 1.2d | 2022-08-04 | 2022-08-05 |  | 0d | Business Intelligence Analyst [20%]; Machine Learning Engineer [90%]; Product Manager [67%] | 13.73h |
| 126 | 3.2.1.5.3 | **Determine Next Steps** | 0.6d | 2022-08-05 | 2022-08-08 | 124 | 0d |  | 6.86h |
| 127 | 3.2.1.5.3.1 | List of Possible Actions | 0.3d | 2022-08-05 | 2022-08-08 |  | 0d | Business Intelligence Analyst [20%]; Machine Learning Engineer [90%]; Product Manager [67%] | 3.43h |
| 128 | 3.2.1.5.3.2 | Decision | 0.3d | 2022-08-08 | 2022-08-08 | 127 | 0d | Business Intelligence Analyst [20%]; Machine Learning Engineer [90%]; Product Manager [67%] | 3.43h |

| ID | WBS | Task | Duration | Start | Finish | Predecessors | Total slack | Resources | Work |
| --- | --- | --- | --- | --- | --- | --- | --- | --- | --- |
| 129 | 3.2.1.6 | **PHASE 6 -DEPLOYMENT** | 21d | 2022-08-08 | 2022-09-06 | 120 | 0d |  | 240.24h |
| 130 | 3.2.1.6.1 | **Plan Deployment** | 12d | 2022-08-08 | 2022-08-24 |  | 0d |  | 137.28h |
| 131 | 3.2.1.6.1.1 | Deployment Plan | 12d | 2022-08-08 | 2022-08-24 |  | 0d | Business Intelligence Analyst [20%]; Machine Learning Engineer [90%]; Product Manager [67%] | 137.28h |
| 132 | 3.2.1.6.2 | **Plan Monitoring & Maintenance** | 3d | 2022-08-24 | 2022-08-29 | 130 | 0d |  | 34.32h |
| 133 | 3.2.1.6.2.1 | Monitoring and Maintenance Plan | 3d | 2022-08-24 | 2022-08-29 |  | 0d | Business Intelligence Analyst [20%]; Machine Learning Engineer [90%]; Product Manager [67%] | 34.32h |
| 134 | 3.2.1.6.3 | **Produce Final Report** | 5.4d | 2022-08-29 | 2022-09-05 | 132 | 0d |  | 61.78h |
| 135 | 3.2.1.6.3.1 | Final Report | 3d | 2022-08-29 | 2022-09-01 |  | 0d | Business Intelligence Analyst [20%]; Machine Learning Engineer [90%]; Product Manager [67%] | 34.32h |
| 136 | 3.2.1.6.3.2 | Final Presentation | 2.4d | 2022-09-01 | 2022-09-05 | 135 | 0d | Business Intelligence Analyst [20%]; Machine Learning Engineer [90%]; Product Manager [67%] | 27.46h |
| 137 | 3.2.1.6.4 | **Review Project** | 0.6d | 2022-09-05 | 2022-09-06 | 134 | 0d |  | 6.86h |
| 138 | 3.2.1.6.4.1 | Experience Documentation | 0.6d | 2022-09-05 | 2022-09-06 |  | 0d | Business Intelligence Analyst [20%]; Machine Learning Engineer [90%]; Product Manager [67%] | 6.86h |
| 139 | 3.3 | **Mantenimiento Planta** | 331.99d | 2022-09-06 | 2023-12-14 | 65 | 0d |  | 1407.64h |
| 140 | 3.3.1 | **Modelos p/ Deteccion de Anomalias** | 331.99d | 2022-09-06 | 2023-12-14 |  | 0d |  | 1407.64h |
| 141 | 3.3.1.1 | **PHASE 1 - BUSINESS UNDERSTANDING** | 40.8d | 2022-09-06 | 2022-11-02 |  | 0d |  | 172.98h |
| 142 | 3.3.1.1.1 | **Determine Business Objectives** | 12d | 2022-09-06 | 2022-09-22 |  | 0d |  | 50.88h |
| 143 | 3.3.1.1.1.1 | Background | 7.2d | 2022-09-06 | 2022-09-15 |  | 0d | Machine Learning Engineer [80%]; Business Intelligence Analyst [20%]; Product Manager [33%] | 30.53h |
| 144 | 3.3.1.1.1.2 | Business Objectives | 2.4d | 2022-09-15 | 2022-09-20 | 143 | 0d | Machine Learning Engineer [80%]; Business Intelligence Analyst [20%]; Product Manager [33%] | 10.18h |
| 145 | 3.3.1.1.1.3 | Business Success Criteria | 2.4d | 2022-09-20 | 2022-09-22 | 144 | 0d | Machine Learning Engineer [80%]; Business Intelligence Analyst [20%]; Product Manager [33%] | 10.18h |
| 146 | 3.3.1.1.2 | **Asses Situation** | 20.4d | 2022-09-22 | 2022-10-20 | 142 | 0d |  | 86.49h |
| 147 | 3.3.1.1.2.1 | Inventory of Resources | 12d | 2022-09-22 | 2022-10-10 |  | 0d | Machine Learning Engineer [80%]; Business Intelligence Analyst [20%]; Product Manager [33%] | 50.88h |
| 148 | 3.3.1.1.2.2 | Requirements, Assumptions, and Constraints | 2.4d | 2022-10-10 | 2022-10-12 | 147 | 0d | Machine Learning Engineer [80%]; Business Intelligence Analyst [20%]; Product Manager [33%] | 10.18h |
| 149 | 3.3.1.1.2.3 | Risk and Contingencies | 2.4d | 2022-10-12 | 2022-10-17 | 148 | 0d | Machine Learning Engineer [80%]; Business Intelligence Analyst [20%]; Product Manager [33%] | 10.18h |
| 150 | 3.3.1.1.2.4 | Terminology | 1.2d | 2022-10-17 | 2022-10-18 | 149 | 0d | Machine Learning Engineer [80%]; Business Intelligence Analyst [20%]; Product Manager [33%] | 5.09h |
| 151 | 3.3.1.1.2.5 | Costs and Benefits | 2.4d | 2022-10-18 | 2022-10-20 | 150 | 0d | Machine Learning Engineer [80%]; Business Intelligence Analyst [20%]; Product Manager [33%] | 10.18h |
| 152 | 3.3.1.1.3 | **Determine Data Minning Goals** | 4.8d | 2022-10-20 | 2022-10-27 | 146 | 0d |  | 20.35h |
| 153 | 3.3.1.1.3.1 | Data Minning Goals | 2.4d | 2022-10-20 | 2022-10-25 |  | 0d | Machine Learning Engineer [80%]; Business Intelligence Analyst [20%]; Product Manager [33%] | 10.18h |
| 154 | 3.3.1.1.3.2 | Data Succes Criteria | 2.4d | 2022-10-25 | 2022-10-27 | 153 | 0d | Machine Learning Engineer [80%]; Business Intelligence Analyst [20%]; Product Manager [33%] | 10.18h |

| ID | WBS | Task | Duration | Start | Finish | Predecessors | Total slack | Resources | Work |
| --- | --- | --- | --- | --- | --- | --- | --- | --- | --- |
| 155 | 3.3.1.1.4 | **Produce Project Plan** | 3.6d | 2022-10-27 | 2022-11-02 | 152 | 0d |  | 15.26h |
| 156 | 3.3.1.1.4.1 | Project Plan | 1.2d | 2022-10-27 | 2022-10-28 |  | 0d | Machine Learning Engineer [80%]; Business Intelligence Analyst [20%]; Product Manager [33%] | 5.09h |
| 157 | 3.3.1.1.4.2 | Initial Assesment of Tools and Techniques | 2.4d | 2022-10-28 | 2022-11-02 | 156 | 0d | Machine Learning Engineer [80%]; Business Intelligence Analyst [20%]; Product Manager [33%] | 10.18h |
| 158 | 3.3.1.2 | **PHASE 2 - DATA UNDERSTANDING** | 57.6d | 2022-11-02 | 2023-01-20 | 141 | 0d |  | 244.22h |
| 159 | 3.3.1.2.1 | **Collect Initial Data** | 24d | 2022-11-02 | 2022-12-06 |  | 0d |  | 101.76h |
| 160 | 3.3.1.2.1.1 | Initial Data Collection Report | 24d | 2022-11-02 | 2022-12-06 |  | 0d | Machine Learning Engineer [80%]; Business Intelligence Analyst [20%]; Product Manager [33%] | 101.76h |
| 161 | 3.3.1.2.2 | **Describe Data** | 4.8d | 2022-12-06 | 2022-12-13 | 159 | 0d |  | 20.35h |
| 162 | 3.3.1.2.2.1 | Data Description Report | 4.8d | 2022-12-06 | 2022-12-13 |  | 0d | Machine Learning Engineer [80%]; Business Intelligence Analyst [20%]; Product Manager [33%] | 20.35h |
| 163 | 3.3.1.2.3 | **Explore Data** | 24d | 2022-12-13 | 2023-01-16 | 161 | 0d |  | 101.76h |
| 164 | 3.3.1.2.3.1 | Data Exploration Report | 24d | 2022-12-13 | 2023-01-16 |  | 0d | Machine Learning Engineer [80%]; Business Intelligence Analyst [20%]; Product Manager [33%] | 101.76h |
| 165 | 3.3.1.2.4 | **Verify Data Quality** | 4.8d | 2023-01-16 | 2023-01-20 | 163 | 0d |  | 20.35h |
| 166 | 3.3.1.2.4.1 | Data Quality Report | 4.8d | 2023-01-16 | 2023-01-20 |  | 0d | Machine Learning Engineer [80%]; Business Intelligence Analyst [20%]; Product Manager [33%] | 20.35h |
| 167 | 3.3.1.3 | **PHASE 3 - DATA PREPARATION** | 84d | 2023-01-20 | 2023-05-18 | 158 | 0d |  | 356.15h |
| 168 | 3.3.1.3.1 | Data Set | 36d | 2023-01-20 | 2023-03-13 |  | 0d | Machine Learning Engineer [80%]; Business Intelligence Analyst [20%]; Product Manager [33%] | 152.64h |
| 169 | 3.3.1.3.2 | Data Set Description | 4.8d | 2023-03-13 | 2023-03-20 | 168 | 0d | Machine Learning Engineer [80%]; Business Intelligence Analyst [20%]; Product Manager [33%] | 20.35h |
| 170 | 3.3.1.3.3 | **Select Data Set** | 2.4d | 2023-03-20 | 2023-03-23 | 169 | 0d |  | 10.18h |
| 171 | 3.3.1.3.3.1 | Rationale for Inclusion/Exclusion | 2.4d | 2023-03-20 | 2023-03-23 |  | 0d | Machine Learning Engineer [80%]; Business Intelligence Analyst [20%]; Product Manager [33%] | 10.18h |
| 172 | 3.3.1.3.4 | **Clean Data** | 4.8d | 2023-03-23 | 2023-03-29 | 170 | 0d |  | 20.35h |
| 173 | 3.3.1.3.4.1 | Data Cleaning Report | 4.8d | 2023-03-23 | 2023-03-29 |  | 0d | Machine Learning Engineer [80%]; Business Intelligence Analyst [20%]; Product Manager [33%] | 20.35h |
| 174 | 3.3.1.3.5 | **Construct Data** | 14.4d | 2023-03-29 | 2023-04-19 | 172 | 0d |  | 61.05h |
| 175 | 3.3.1.3.5.1 | Derived Attributes | 9.6d | 2023-03-29 | 2023-04-12 |  | 0d | Machine Learning Engineer [80%]; Business Intelligence Analyst [20%]; Product Manager [33%] | 40.7h |
| 176 | 3.3.1.3.5.2 | Generated Records | 4.8d | 2023-04-12 | 2023-04-19 | 175 | 0d | Machine Learning Engineer [80%]; Business Intelligence Analyst [20%]; Product Manager [33%] | 20.35h |
| 177 | 3.3.1.3.6 | **Integrate Data** | 16.8d | 2023-04-19 | 2023-05-12 | 174 | 0d |  | 71.23h |
| 178 | 3.3.1.3.6.1 | Merge Data | 16.8d | 2023-04-19 | 2023-05-12 |  | 0d | Machine Learning Engineer [80%]; Business Intelligence Analyst [20%]; Product Manager [33%] | 71.23h |

| ID | WBS | Task | Duration | Start | Finish | Predecessors | Total slack | Resources | Work |
| --- | --- | --- | --- | --- | --- | --- | --- | --- | --- |
| 179 | 3.3.1.3.7 | **Format Data** | 4.8d | 2023-05-12 | 2023-05-18 | 177 | 0d |  | 20.35h |
| 180 | 3.3.1.3.7.1 | Reformatted Data | 4.8d | 2023-05-12 | 2023-05-18 |  | 0d | Machine Learning Engineer [80%]; Business Intelligence Analyst [20%]; Product Manager [33%] | 20.35h |
| 181 | 3.3.1.4 | **PHASE 4 - MODELING** | 76.8d | 2023-05-18 | 2023-09-04 | 167 | 0d |  | 325.62h |
| 182 | 3.3.1.4.1 | **Select Modeling Technique** | 14.4d | 2023-05-18 | 2023-06-08 |  | 0d |  | 61.05h |
| 183 | 3.3.1.4.1.1 | Modeling Technique | 9.6d | 2023-05-18 | 2023-06-01 |  | 0d | Machine Learning Engineer [80%]; Business Intelligence Analyst [20%]; Product Manager [33%] | 40.7h |
| 184 | 3.3.1.4.1.2 | Modeling Assumptions | 4.8d | 2023-06-01 | 2023-06-08 | 183 | 0d | Machine Learning Engineer [80%]; Business Intelligence Analyst [20%]; Product Manager [33%] | 20.35h |
| 185 | 3.3.1.4.2 | **Generate Test Design** | 12d | 2023-06-08 | 2023-06-26 | 182 | 0d |  | 50.88h |
| 186 | 3.3.1.4.2.1 | Test Design | 12d | 2023-06-08 | 2023-06-26 |  | 0d | Machine Learning Engineer [80%]; Business Intelligence Analyst [20%]; Product Manager [33%] | 50.88h |
| 187 | 3.3.1.4.3 | **Build Model** | 45.6d | 2023-06-26 | 2023-08-28 | 185 | 0d |  | 193.34h |
| 188 | 3.3.1.4.3.1 | Parameter Settings | 12d | 2023-06-26 | 2023-07-12 |  | 0d | Machine Learning Engineer [80%]; Business Intelligence Analyst [20%]; Product Manager [33%] | 50.88h |
| 189 | 3.3.1.4.3.2 | Models | 28.8d | 2023-07-12 | 2023-08-22 | 188 | 0d | Machine Learning Engineer [80%]; Business Intelligence Analyst [20%]; Product Manager [33%] | 122.11h |
| 190 | 3.3.1.4.3.3 | Model Description | 4.8d | 2023-08-22 | 2023-08-28 | 189 | 0d | Machine Learning Engineer [80%]; Business Intelligence Analyst [20%]; Product Manager [33%] | 20.35h |
| 191 | 3.3.1.4.4 | **Assess Model** | 4.8d | 2023-08-28 | 2023-09-04 | 187 | 0d |  | 20.35h |
| 192 | 3.3.1.4.4.1 | Model Assessment | 2.4d | 2023-08-28 | 2023-08-31 |  | 0d | Machine Learning Engineer [80%]; Business Intelligence Analyst [20%]; Product Manager [33%] | 10.18h |
| 193 | 3.3.1.4.4.2 | Revised Parameter Settings | 2.4d | 2023-08-31 | 2023-09-04 | 192 | 0d | Machine Learning Engineer [80%]; Business Intelligence Analyst [20%]; Product Manager [33%] | 10.18h |
| 194 | 3.3.1.5 | **PHASE 5 - EVALUATION** | 16.8d | 2023-09-04 | 2023-09-27 | 181 | 0d |  | 71.23h |
| 195 | 3.3.1.5.1 | **Evaluate Results** | 9.6d | 2023-09-04 | 2023-09-18 |  | 0d |  | 40.7h |
| 196 | 3.3.1.5.1.1 | Assessment of Data Mining Results w. r. t. Business Success Criteria | 7.2d | 2023-09-04 | 2023-09-13 |  | 0d | Machine Learning Engineer [80%]; Business Intelligence Analyst [20%]; Product Manager [33%] | 30.53h |
| 197 | 3.3.1.5.1.2 | Approved Models | 2.4d | 2023-09-13 | 2023-09-18 | 196 | 0d | Machine Learning Engineer [80%]; Business Intelligence Analyst [20%]; Product Manager [33%] | 10.18h |
| 198 | 3.3.1.5.2 | **Review Process** | 4.8d | 2023-09-18 | 2023-09-25 | 195 | 0d |  | 20.35h |
| 199 | 3.3.1.5.2.1 | Review of Process | 4.8d | 2023-09-18 | 2023-09-25 |  | 0d | Machine Learning Engineer [80%]; Business Intelligence Analyst [20%]; Product Manager [33%] | 20.35h |
| 200 | 3.3.1.5.3 | **Determine Next Steps** | 2.4d | 2023-09-25 | 2023-09-27 | 198 | 0d |  | 10.17h |
| 201 | 3.3.1.5.3.1 | List of Possible Actions | 1.2d | 2023-09-25 | 2023-09-26 |  | 0d | Machine Learning Engineer [80%]; Business Intelligence Analyst [20%]; Product Manager [33%] | 5.09h |
| 202 | 3.3.1.5.3.2 | Decision | 1.2d | 2023-09-26 | 2023-09-27 | 201 | 0d | Machine Learning Engineer [80%]; Business Intelligence Analyst [20%]; Product Manager [33%] | 5.09h |

| ID | WBS | Task | Duration | Start | Finish | Predecessors | Total slack | Resources | Work |
| --- | --- | --- | --- | --- | --- | --- | --- | --- | --- |
| 203 | 3.3.1.6 | **PHASE 6 -DEPLOYMENT** | 56d | 2023-09-27 | 2023-12-14 | 194 | 0d |  | 237.44h |
| 204 | 3.3.1.6.1 | **Plan Deployment** | 20d | 2023-09-27 | 2023-10-25 |  | 0d |  | 84.8h |
| 205 | 3.3.1.6.1.1 | Deployment Plan | 20d | 2023-09-27 | 2023-10-25 |  | 0d | Machine Learning Engineer [80%]; Business Intelligence Analyst [20%]; Product Manager [33%] | 84.8h |
| 206 | 3.3.1.6.2 | **Plan Monitoring & Maintenance** | 12d | 2023-10-25 | 2023-11-10 | 204 | 0d |  | 50.88h |
| 207 | 3.3.1.6.2.1 | Monitoring and Maintenance Plan | 12d | 2023-10-25 | 2023-11-10 |  | 0d | Machine Learning Engineer [80%]; Business Intelligence Analyst [20%]; Product Manager [33%] | 50.88h |
| 208 | 3.3.1.6.3 | **Produce Final Report** | 21.6d | 2023-11-10 | 2023-12-12 | 206 | 0d |  | 91.58h |
| 209 | 3.3.1.6.3.1 | Final Report | 12d | 2023-11-10 | 2023-11-28 |  | 0d | Machine Learning Engineer [80%]; Business Intelligence Analyst [20%]; Product Manager [33%] | 50.88h |
| 210 | 3.3.1.6.3.2 | Final Presentation | 9.6d | 2023-11-28 | 2023-12-12 | 209 | 0d | Machine Learning Engineer [80%]; Business Intelligence Analyst [20%]; Product Manager [33%] | 40.7h |
| 211 | 3.3.1.6.4 | **Review Project** | 2.4d | 2023-12-12 | 2023-12-14 | 208 | 0d |  | 10.18h |
| 212 | 3.3.1.6.4.1 | Experience Documentation | 2.4d | 2023-12-12 | 2023-12-14 |  | 0d | Machine Learning Engineer [80%]; Business Intelligence Analyst [20%]; Product Manager [33%] | 10.18h |
| 213 | 3.4 | **Mina** | 1d | 2022-01-03 | 2022-01-03 |  | 507.43d |  |  |
| 214 | 3.4.1 | A Definir | 1d | 2022-01-03 | 2022-01-03 |  | 257.17d |  |  |
